# 一研为定

Schedule from MS Project, 2020-03-19 to 2020-05-13, status date 2020-04-30, costs in ¥, A marks actual dates.

## Calendars

- 标准: Mon-Fri 08:00-12:00, 13:00-17:00; Sat-Sun off.

## Resources

| Resource |
| --- |
| 产品经理 |
| 项目经理 |
| UI专家 |
| 需求专家 |
| 设计专家 |
| 质量专家 |
| 测试员1 |
| 测试员2 |
| 程序员1 |
| 程序员2 |
| 程序员3 |
| 程序员4 |
| 程序员5 |

## Schedule

| ID | WBS | Task | Type | Duration | Start | Finish | Predecessors | Complete | Remaining | Baseline start | Baseline finish | Baseline duration | Constraint | Resources | Work | Actual work | Cost | Baseline cost | Actual cost |
| --- | --- | --- | --- | --- | --- | --- | --- | --- | --- | --- | --- | --- | --- | --- | --- | --- | --- | --- | --- |
| 1 | 1 | **启动** |  | 7d | 2020-03-19 A | 2020-03-27 |  | 11% | 6.25d | 2020-03-19 | 2020-03-24 | 4d |  |  | 176h | 78h | 8,840 | 10,280 | 4,950 |
| 2 | 1.1 | 任命项目经理 | manual | 1d | 2020-03-19 A | 2020-03-19 |  |  | 1d | 2020-03-19 | 2020-03-19 | 1d | as late as possible | 产品经理 | 8h |  | 800 | 800 | 400 |
| 3 | 1.2 | 组建核心团队 | manual | 1d | 2020-03-19 A | 2020-03-20 |  | 75% | 0.25d | 2020-03-19 | 2020-03-19 | 1d | as late as possible | UI专家; 测试员1; 测试员2; 产品经理; 程序员1; 程序员2; 程序员3; 程序员4; 程序员5; 设计专家; 项目经理; 需求专家; 质量专家 | 104h | 78h | 3,800 | 3,800 | 2,950 |
| 4 | 1.3 | 制定里程碑计划 | manual | 1d | 2020-03-19 A | 2020-03-23 |  |  | 1d | 2020-03-19 | 2020-03-19 | 1d | as late as possible | 产品经理; 项目经理 | 16h |  | 1,120 | 1,120 | 400 |
| 5 | 1.4 | 分析干系人 | manual | 1d | 2020-03-19 A | 2020-03-24 |  |  | 1d | 2020-03-19 | 2020-03-19 | 1d | as late as possible | 产品经理; 项目经理 | 16h |  | 1,120 | 1,120 | 400 |
| 6 | 1.5 | 制定项目章程 | manual | 1d | 2020-03-20 A | 2020-03-25 | 2, 3, 4, 5 |  | 1d | 2020-03-20 | 2020-03-20 | 1d |  | 产品经理; 项目经理 | 16h |  | 1,120 | 1,120 | 400 |
| 7 | 1.6 | 项目启动大会 | manual | 2d | 2020-03-23 A | 2020-03-25 | 6 |  | 2d | 2020-03-23 | 2020-03-24 | 2d | as late as possible | 产品经理; 项目经理; 需求专家 | 16h |  | 880 | 2,320 | 400 |
| 8 | 2 | **规划** |  | 23d | 2020-03-24 A | 2020-04-23 |  |  | 23d | 2020-03-24 | 2020-04-13 | 15d |  |  | 192h |  | 7,200 | 7,200 |  |
| 9 | 2.1 | **规划范围** |  | 5d | 2020-03-24 A | 2020-03-30 |  |  | 5d | 2020-03-24 | 2020-03-27 | 4d |  |  | 56h |  | 1,920 | 1,920 |  |
| 10 | 2.1.1 | 制定需求说明书 | manual | 1d | 2020-03-24 A | 2020-03-26 | 7 |  | 1d | 2020-03-24 | 2020-03-24 | 1d | as late as possible | 需求专家 | 8h |  | 240 | 240 |  |
| 11 | 2.1.2 | 界面设计 | manual | 1d | 2020-03-25 A | 2020-03-27 | 10 |  | 1d | 2020-03-25 | 2020-03-25 | 1d | as late as possible | UI专家; 设计专家 | 16h |  | 480 | 480 |  |
| 12 | 2.1.3 | 详细设计说明书 | manual | 1d | 2020-03-25 A | 2020-03-26 | 10 |  | 1d | 2020-03-25 | 2020-03-25 | 1d | as late as possible | 设计专家 | 8h |  | 240 | 240 |  |
| 13 | 2.1.4 | 范围说明书 | manual | 1d | 2020-03-25 A | 2020-03-26 | 10 |  | 1d | 2020-03-25 | 2020-03-25 | 1d | as late as possible | 项目经理 | 8h |  | 320 | 320 |  |
| 14 | 2.1.5 | 创建WBS | manual | 1d | 2020-03-26 A | 2020-03-27 | 11, 12, 13 |  | 1d | 2020-03-26 | 2020-03-26 | 1d | as late as possible | 项目经理 | 8h |  | 320 | 320 |  |
| 15 | 2.1.6 | 形成范围基准 | manual | 1d | 2020-03-27 A | 2020-03-30 | 14 |  | 1d | 2020-03-27 | 2020-03-27 | 1d | as late as possible | 项目经理 | 8h |  | 320 | 320 |  |
| 16 | 2.2 | **规划时间** |  | 17d | 2020-03-30 A | 2020-04-21 |  |  | 17d | 2020-03-28 | 2020-04-02 | 5d |  |  | 48h |  | 1,920 | 1,920 |  |
| 17 | 2.2.1 | 排列工作包顺序 | manual | 2d | 2020-03-31 | 2020-04-06 | 15 |  |  | 2020-03-28 | 2020-04-02 | 2d | as late as possible | 项目经理 | 16h |  | 640 | 640 |  |
| 18 | 2.2.2 | 估算资源 | manual | 1d | 2020-03-30 A | 2020-04-01 | 17 |  | 1d | 2020-03-30 | 2020-03-30 | 1d | as late as possible | 项目经理 | 8h |  | 320 | 320 |  |
| 19 | 2.2.3 | 估算持续时间 | manual | 1d | 2020-03-31 A | 2020-04-02 | 18 |  | 1d | 2020-03-31 | 2020-03-31 | 1d | as late as possible | 项目经理 | 8h |  | 320 | 320 |  |
| 20 | 2.2.4 | 制定进度计划 | manual | 1d | 2020-04-01 A | 2020-04-07 | 19 |  | 1d | 2020-04-01 | 2020-04-01 | 1d | as late as possible | 项目经理 | 8h |  | 320 | 320 |  |
| 21 | 2.2.5 | 形成进度基准 | manual | 1d | 2020-04-02 A | 2020-04-21 | 20 |  | 1d | 2020-04-02 | 2020-04-02 | 1d |  | 项目经理 | 8h |  | 320 | 320 |  |
| 22 | 2.3 | **规划成本** |  | 14d | 2020-04-03 A | 2020-04-22 |  |  | 14d | 2020-04-03 | 2020-04-07 | 3d |  |  | 16h |  | 640 | 640 |  |
| 23 | 2.3.1 | 项目成本估算 | milestone, manual | 0d | 2020-04-03 A | 2020-04-03 A | 21 | 100% |  | 2020-04-03 | 2020-04-03 |  | as late as possible | 项目经理 |  |  |  |  |  |
| 24 | 2.3.2 | 项目预算 | manual | 1d | 2020-04-06 A | 2020-04-09 | 23 |  | 1d | 2020-04-06 | 2020-04-06 | 1d | as late as possible | 项目经理 | 8h |  | 320 | 320 |  |
| 25 | 2.3.3 | 形成范围基准 | manual | 1d | 2020-04-07 A | 2020-04-22 | 24 |  | 1d | 2020-04-07 | 2020-04-07 | 1d |  | 项目经理 | 8h |  | 320 | 320 |  |

| ID | WBS | Task | Type | Duration | Start | Finish | Predecessors | Remaining | Baseline start | Baseline finish | Baseline duration | Total slack | Constraint | Resources | Work | Cost | Baseline cost | Actual cost |
| --- | --- | --- | --- | --- | --- | --- | --- | --- | --- | --- | --- | --- | --- | --- | --- | --- | --- | --- |
| 26 | 2.4 | **规划质量** |  | 4d | 2020-03-30 A | 2020-04-02 |  | 4d | 2020-03-30 | 2020-03-31 | 2d |  |  |  | 16h | 480 | 480 |  |
| 27 | 2.4.1 | 制定测试计划 | manual | 1d | 2020-03-30 A | 2020-04-01 | 15 | 1d | 2020-03-30 | 2020-03-30 | 1d |  | as late as possible | 质量专家 | 8h | 240 | 240 |  |
| 28 | 2.4.2 | 制定测试用例 | manual | 1d | 2020-03-31 A | 2020-04-02 | 27 | 1d | 2020-03-31 | 2020-03-31 | 1d |  | as late as possible | 质量专家 | 8h | 240 | 240 |  |
| 29 | 2.5 | **规划人力资源** |  | 7d | 2020-03-31 A | 2020-04-08 |  | 7d | 2020-03-31 | 2020-04-01 | 2d |  |  |  | 16h | 640 | 640 |  |
| 30 | 2.5.1 | 制定人力资源计划 | manual | 1d | 2020-03-31 A | 2020-04-03 | 18 | 1d | 2020-03-31 | 2020-03-31 | 1d |  | as late as possible | 项目经理 | 8h | 320 | 320 |  |
| 31 | 2.5.2 | 制定人员配备管理计划 | manual | 1d | 2020-04-01 A | 2020-04-08 | 30 | 1d | 2020-04-01 | 2020-04-01 | 1d |  | as late as possible | 项目经理 | 8h | 320 | 320 |  |
| 32 | 2.6 | **规划沟通** |  | 12d | 2020-04-02 A | 2020-04-17 |  | 12d | 2020-04-02 | 2020-04-02 | 1d |  |  |  | 8h | 320 | 320 |  |
| 33 | 2.6.1 | 制定沟通管理计划 | manual | 1d | 2020-04-02 A | 2020-04-17 | 31 | 1d | 2020-04-02 | 2020-04-02 | 1d |  | as late as possible | 项目经理 | 8h | 320 | 320 |  |
| 34 | 2.7 | **规划风险** |  | 5d | 2020-04-08 A | 2020-04-14 |  | 5d | 2020-04-08 | 2020-04-13 | 4d |  |  |  | 24h | 960 | 960 |  |
| 35 | 2.7.1 | 识别风险 | manual | 1d | 2020-04-08 A | 2020-04-10 | 16, 22, 26, 29 | 1d | 2020-04-08 | 2020-04-08 | 1d |  | as late as possible | 项目经理 | 8h | 320 | 320 |  |
| 36 | 2.7.2 | 风险分析 | manual | 1d | 2020-04-09 A | 2020-04-13 | 35 | 1d | 2020-04-09 | 2020-04-09 | 1d |  | as late as possible | 项目经理 | 8h | 320 | 320 |  |
| 37 | 2.7.3 | 制定风险登记册 | manual | 1d | 2020-04-10 A | 2020-04-14 | 36 | 1d | 2020-04-10 | 2020-04-10 | 1d |  | as late as possible | 项目经理 | 8h | 320 | 320 |  |
| 38 | 2.8 | 规划整合 | manual | 1d | 2020-04-13 A | 2020-04-23 | 37 | 1d | 2020-04-13 | 2020-04-13 | 1d |  | as late as possible | 项目经理 | 8h | 320 | 320 |  |
| 39 | 3 | **执行与监控** |  | 22d | 2020-04-14 A | 2020-05-13 |  | 22d | 2020-04-14 | 2020-04-27 | 10d | 0d |  |  | 808h | 29,400 | 27,520 | 2,400 |
| 40 | 3.1 | 组建项目团队 | manual | 1d | 2020-04-14 A | 2020-04-15 | 8 | 1d | 2020-04-14 | 2020-04-14 | 1d |  | as late as possible | UI专家; 测试员1; 测试员2; 产品经理; 程序员1; 程序员2; 程序员3; 程序员4; 程序员5; 设计专家; 项目经理; 需求专家; 质量专家 | 104h | 3,800 | 3,800 | 400 |
| 41 | 3.2 | **项目执行** |  | 21d | 2020-04-15 A | 2020-05-13 |  | 21d | 2020-04-15 | 2020-04-22 | 6d | 0d |  |  | 224h | 7,760 | 4,480 |  |
| 42 | 3.2.1 | **用户模块** |  | 21d | 2020-04-15 A | 2020-05-13 |  | 21d | 2020-04-15 | 2020-04-22 | 6d | 0d |  |  | 192h | 6,720 | 3,360 |  |
| 43 | 3.2.1.1 | 注册登录 | manual | 13d | 2020-04-15 A | 2020-05-12 | 40 | 13d | 2020-04-15 | 2020-04-15 | 1d |  |  | 程序员1 | 104h | 3,640 | 280 |  |
| 44 | 3.2.1.2 | 浏览院校专业 |  | 1d | 2020-04-15 A | 2020-05-13 | 43 | 1d | 2020-04-16 | 2020-04-16 | 1d | 0d | as late as possible | 程序员2 | 8h | 280 | 280 |  |
| 45 | 3.2.1.3 | 查询院校专业 | manual | 1d | 2020-04-16 A | 2020-04-20 | 43 | 1d | 2020-04-16 | 2020-04-16 | 1d |  | as late as possible | 程序员2 | 8h | 280 | 280 |  |
| 46 | 3.2.1.4 | 发表文章 |  | 1d | 2020-04-17 A | 2020-04-21 | 45 | 1d | 2020-04-17 | 2020-04-17 | 1d | 0d | as late as possible | 程序员3 | 8h | 280 | 280 |  |
| 47 | 3.2.1.5 | 回复文章 | manual | 1d | 2020-04-17 A | 2020-04-20 | 45 | 1d | 2020-04-17 | 2020-04-17 | 1d |  | as late as possible | 程序员3 | 8h | 280 | 280 |  |
| 48 | 3.2.1.6 | 每日打卡 |  | 1d | 2020-04-20 A | 2020-04-21 | 47 | 1d | 2020-04-20 | 2020-04-20 | 1d | 0d | as late as possible | 程序员4 | 8h | 280 | 280 |  |
| 49 | 3.2.1.7 | 添加学习任务 | manual | 1d | 2020-04-20 A | 2020-04-22 | 47 | 1d | 2020-04-20 | 2020-04-20 | 1d |  | as late as possible | 程序员4 | 8h | 280 | 280 |  |
| 50 | 3.2.1.8 | 考研自习室 | manual | 1d | 2020-04-23 | 2020-04-27 | 49 |  | 2020-04-21 | 2020-04-21 | 1d |  | as late as possible | 程序员4 | 8h | 280 | 280 |  |
| 51 | 3.2.1.9 | 考研真题资料 |  | 1d | 2020-04-21 A | 2020-04-23 | 49 | 1d | 2020-04-21 | 2020-04-21 | 1d | 0d | as late as possible | 程序员5 | 8h | 280 | 280 |  |
| 52 | 3.2.1.10 | 考研网课 | manual | 1d | 2020-04-21 A | 2020-04-27 | 49 | 1d | 2020-04-21 | 2020-04-21 | 1d |  |  | 程序员5 | 8h | 280 | 280 |  |
| 53 | 3.2.1.11 | 考研答疑 | manual | 1d | 2020-04-21 A | 2020-04-24 | 49 | 1d | 2020-04-21 | 2020-04-21 | 1d |  | as late as possible | 程序员5 | 8h | 280 | 280 |  |
| 54 | 3.2.1.12 | 个人中心 |  | 1d | 2020-04-22 A | 2020-04-27 | 53 | 1d | 2020-04-22 | 2020-04-22 | 1d | 0d | as late as possible | 程序员1 | 8h | 280 | 280 |  |

| ID | WBS | Task | Type | Duration | Start | Finish | Predecessors | Remaining | Baseline start | Baseline finish | Baseline duration | Total slack | Constraint | Resources | Work | Cost | Baseline cost | Actual cost |
| --- | --- | --- | --- | --- | --- | --- | --- | --- | --- | --- | --- | --- | --- | --- | --- | --- | --- | --- |
| 55 | 3.2.2 | **管理员模块** |  | 6d | 2020-04-15 A | 2020-04-22 |  | 6d | 2020-04-15 | 2020-04-16 | 2d |  |  |  | 32h | 1,040 | 1,120 |  |
| 56 | 3.2.2.1 | 数据分析 |  | 2d | 2020-04-21 | 2020-04-22 | 40 |  | 2020-04-15 | 2020-04-16 | 2d | 0d | as late as possible | 需求专家 | 16h | 480 | 560 |  |
| 57 | 3.2.2.2 | 信息资料收集 | manual | 2d | 2020-04-15 A | 2020-04-22 | 40 | 2d | 2020-04-15 | 2020-04-16 | 2d |  | as late as possible | 程序员1 | 16h | 560 | 560 |  |
| 58 | 3.3 | **项目监控** |  | 15d | 2020-04-15 A | 2020-05-05 |  | 15d | 2020-04-15 | 2020-04-17 | 3d |  |  |  | 160h | 6,200 | 6,200 | 800 |
| 59 | 3.3.1 | 各项指标监控 | manual | 1d | 2020-04-15 A | 2020-04-16 | 40 | 1d | 2020-04-15 | 2020-04-15 | 1d |  | as late as possible | 测试员1; 产品经理; 项目经理 | 24h | 1,280 | 1,280 | 400 |
| 60 | 3.3.2 | 监控评审 | manual | 2d | 2020-04-16 A | 2020-04-20 | 59 | 2d | 2020-04-16 | 2020-04-16 | 1d |  | as late as possible | 设计专家; 项目经理 | 16h | 560 | 560 |  |
| 61 | 3.3.3 | 变更评审 | manual | 2d | 2020-04-17 A | 2020-05-05 | 60 | 2d | 2020-04-17 | 2020-04-17 | 1d |  | as late as possible | 设计专家; 项目经理 | 16h | 560 | 560 |  |
| 62 | 3.3.4 | 例会 |  | 1d | 2020-04-15 A | 2020-04-16 | 40 | 1d | 2020-04-15 | 2020-04-15 | 1d | 0d | as late as possible | UI专家; 测试员1; 测试员2; 产品经理; 程序员1; 程序员2; 程序员3; 程序员4; 程序员5; 设计专家; 项目经理; 需求专家; 质量专家 | 104h | 3,800 | 3,800 | 400 |
| 63 | 3.4 | **管理干系人** |  | 12d | 2020-04-15 A | 2020-04-30 |  | 12d | 2020-04-15 | 2020-04-15 | 1d |  |  |  | 24h | 960 | 960 |  |
| 64 | 3.4.1 | 发布项目信息 |  | 1d | 2020-04-15 A | 2020-04-27 | 40 | 1d | 2020-04-15 | 2020-04-15 | 1d | 0d | as late as possible | 项目经理 | 8h | 320 | 320 |  |
| 65 | 3.4.2 | 报告监控指标 |  | 1d | 2020-04-15 A | 2020-04-29 | 40 | 1d | 2020-04-15 | 2020-04-15 | 1d | 0d | as late as possible | 项目经理 | 8h | 320 | 320 |  |
| 66 | 3.4.3 | 干系人沟通 |  | 1d | 2020-04-15 A | 2020-04-30 | 40 | 1d | 2020-04-15 | 2020-04-15 | 1d | 0d | as late as possible | 项目经理 | 8h | 320 | 320 |  |
| 67 | 3.5 | **团队建设** |  | 15d | 2020-04-15 A | 2020-05-05 |  | 15d | 2020-04-15 | 2020-04-16 | 2d |  |  |  | 248h | 8,600 | 10,000 | 800 |
| 68 | 3.5.1 | 培训 | manual | 1d | 2020-05-05 | 2020-05-05 | 40 |  | 2020-04-15 | 2020-04-15 | 1d |  | as late as possible | UI专家; 测试员1; 测试员2; 设计专家; 需求专家; 质量专家 | 48h | 1,280 | 2,680 |  |
| 69 | 3.5.2 | 娱乐活动 | manual | 2d | 2020-04-15 A | 2020-04-17 | 40 | 2d | 2020-04-15 | 2020-04-15 | 1d |  | as late as possible | UI专家; 测试员1; 测试员2; 产品经理; 程序员1; 程序员2; 程序员3; 程序员5; 设计专家; 项目经理; 需求专家; 质量专家 | 96h | 3,520 | 3,520 | 400 |
| 70 | 3.5.3 | 沟通 | manual | 2d | 2020-04-15 A | 2020-04-17 | 40 | 2d | 2020-04-15 | 2020-04-15 | 1d |  | as late as possible | UI专家; 测试员1; 测试员2; 产品经理; 程序员1; 程序员2; 程序员3; 程序员4; 程序员5; 设计专家; 项目经理; 需求专家; 质量专家 | 104h | 3,800 | 3,800 | 400 |
| 71 | 3.6 | 项目验收 | manual | 1d | 2020-04-27 A | 2020-04-28 | 41 | 1d | 2020-04-27 | 2020-04-27 | 1d |  | as late as possible | UI专家; 产品经理; 设计专家; 项目经理; 需求专家; 质量专家 | 48h | 2,080 | 2,080 | 400 |
| 72 | 4 | **收尾** |  | 8d | 2020-04-28 A | 2020-05-07 |  | 8d | 2020-04-28 | 2020-04-28 | 1d |  |  |  | 104h | 4,320 | 4,320 | 800 |
| 73 | 4.1 | 项目终检 |  | 1d | 2020-04-28 A | 2020-05-06 | 71 | 1d | 2020-04-28 | 2020-04-28 | 1d | 0d | as late as possible | UI专家; 产品经理; 设计专家; 项目经理; 需求专家; 质量专家 | 48h | 2,080 | 2,080 | 400 |
| 74 | 4.2 | 项目内部收尾 | manual | 3d | 2020-04-28 A | 2020-05-07 | 71 | 3d | 2020-04-28 | 2020-04-28 | 1d |  | as late as possible | UI专家; 测试员1; 产品经理; 设计专家; 项目经理; 需求专家; 质量专家 | 56h | 2,240 | 2,240 | 400 |
